# Conveyor Belt Plan

How a schedule from MS Project changed from version to version. A marks actual dates.

## Version 1 (saved 2024-03-16, file FINAL Spring 24 Start File_1.mpp)

Note of the change: Spring semester files

| ID | Task | Duration | Start | Finish | Predecessors | Total float | Constraint |
| --- | --- | --- | --- | --- | --- | --- | --- |
| 1 | System architecture | 40d | 2025-01-01 | 2025-02-09 |  | 0d |  |
| 2 | Hardware specifications | 50d | 2025-02-10 | 2025-03-31 | 1 | 0d | must start on 2025-02-10 |
| 3 | Kernel specifications | 20d | 2025-02-10 | 2025-03-01 | 1 | 0d | must start on 2025-02-10 |
| 4 | Utilities Specification | 25d | 2025-02-10 | 2025-03-06 | 1 | 0d | must start on 2025-02-10 |
| 5 | Hardware Design | 35d | 2025-04-21 | 2025-05-25 | 2 | 47.5d |  |
| 6 | Disk drivers | 90d | 2025-03-07 | 2025-06-04 | 3 | 47.5d |  |
| 7 | Memory management | 37.5d | 2025-05-26 | 2025-07-02 | 3 | 20d |  |
| 8 | Operating system documentation | 15d | 2025-03-02 | 2025-03-16 | 3 | 127.5d |  |
| 9 | Routine utilities | 20d | 2025-07-02 | 2025-07-22 | 4 | 0d |  |
| 10 | Complex utilities | 90d | 2025-04-01 | 2025-06-29 | 4 | 22.5d |  |
| 11 | Utilities documentation | 10d | 2025-03-17 | 2025-03-26 | 4 | 117.5d |  |
| 12 | Hardware documentation | 10d | 2025-05-26 | 2025-06-04 | 5 | 47.5d |  |
| 13 | Integration first phase | 23.33d | 2025-07-22 | 2025-08-14 | 6, 7, 8, 9, 10, 11, 12 | 0d |  |
| 14 | Prototypes | 43.33d | 2025-08-14 | 2025-09-27 | 13 | 0d |  |
| 15 | Serial I/O drivers | 42.5d | 2025-08-14 | 2025-09-26 | 13 | 0.83d |  |
| 16 | System hard/software test | 10d | 2025-09-27 | 2025-10-07 | 14, 15 | 0d |  |
| 17 | Order printed circuit boards | 5d | 2025-10-07 | 2025-10-12 | 16 | 0d |  |
| 18 | Network interface | 25d | 2025-10-07 | 2025-11-01 | 16 | 0d |  |
| 19 | Shell | 25d | 2025-10-07 | 2025-11-01 | 16 | 0d |  |
| 20 | Project documentation | 20d | 2025-10-07 | 2025-10-27 | 16 | 5d |  |
| 21 | Assemble preproduction | 15d | 2025-10-17 | 2025-11-01 | 17FS+5d | 0d |  |
| 22 | Integrated acceptance test | 13.33d | 2025-11-01 | 2025-11-14 | 18, 19, 20, 21 | 0d |  |

## Version 2 (saved 2024-03-17, file FINAL Spring 24 Start File_2.mpp)

Note of the change: Spring semester files

Last finish 2025-11-14 → 2025-10-11 (-34d).

Changed:

| ID | Task | Start | Finish | Duration | Total float | Other |
| --- | --- | --- | --- | --- | --- | --- |
| 5 | Hardware Design | 2025-04-21 → 2025-04-01 (-20d) | 2025-05-25 → 2025-05-05 (-20d) |  | 47.5d → 45d |  |
| 6 | Disk drivers | 2025-03-07 → 2025-03-02 (-5d) | 2025-06-04 → 2025-05-30 (-5d) |  | 47.5d → 30d | resources Assembly/Test; Development [200%] → Assembly/Test; Development |
| 7 | Memory management | 2025-05-26 → 2025-06-05 (+10d) | 2025-07-02 → 2025-06-29 (-3d) | 37.5d → 25d | 20d → 0d | resources Development [200%] → Development [300%] |
| 9 | Routine utilities | 2025-07-02 → 2025-05-06 (-57d) | 2025-07-22 → 2025-05-25 (-58d) |  | 0d → 35d | resources Development [300%] → Development [200%] |
| 10 | Complex utilities | 2025-04-01 → 2025-03-07 (-25d) | 2025-06-29 → 2025-06-04 (-25d) |  | 22.5d → 25d |  |
| 12 | Hardware documentation | 2025-05-26 → 2025-05-06 (-20d) | 2025-06-04 → 2025-05-15 (-20d) |  | 47.5d → 45d |  |
| 13 | Integration first phase | 2025-07-22 → 2025-06-30 (-22d) | 2025-08-14 → 2025-07-23 (-22d) |  |  | resources Assembly/Test; Development; External Test → Assembly/Test; Development [200%]; External Test |
| 14 | Prototypes | 2025-08-14 → 2025-07-23 (-22d) | 2025-09-27 → 2025-09-05 (-22d) | 43.33d → 44d |  | resources Assembly/Test; Development; External Test → Assembly/Test; Development |
| 15 | Serial I/O drivers | 2025-08-14 → 2025-07-23 (-22d) | 2025-09-26 → 2025-09-03 (-23d) |  | 0.83d → 1.5d |  |
| 16 | System hard/software test | 2025-09-27 → 2025-09-05 (-22d) | 2025-10-07 → 2025-09-10 (-27d) | 10d → 5d |  |  |
| 17 | Order printed circuit boards | 2025-10-07 → 2025-09-10 (-27d) | 2025-10-12 → 2025-09-15 (-27d) |  |  |  |
| 18 | Network interface | 2025-10-07 → 2025-09-10 (-27d) | 2025-11-01 → 2025-10-05 (-27d) |  |  |  |
| 19 | Shell | 2025-10-07 → 2025-09-10 (-27d) | 2025-11-01 → 2025-10-05 (-27d) |  |  |  |
| 20 | Project documentation | 2025-10-07 → 2025-09-10 (-27d) | 2025-10-27 → 2025-09-30 (-27d) |  |  |  |
| 21 | Assemble preproduction | 2025-10-17 → 2025-09-20 (-27d) | 2025-11-01 → 2025-10-05 (-27d) |  |  |  |
| 22 | Integrated acceptance test | 2025-11-01 → 2025-10-05 (-27d) | 2025-11-14 → 2025-10-11 (-34d) | 13.33d → 6.67d |  | resources Assembly/Test; Development [200%]; External Test → Assembly/Test; Development [200%] |

## Version 3 (saved 2024-03-17, file FINAL Spring 24 Start File_2_1.mpp)

Note of the change: Spring semester files

Last finish stays 2025-10-11.

Changed:

| ID | Task | Other |
| --- | --- | --- |
| 5 | Hardware Design | baseline finish 2025-06-09 → 2025-05-05 |
| 6 | Disk drivers | baseline start 2025-03-07 → 2025-03-02; baseline finish 2025-06-04 → 2025-05-30 |
| 7 | Memory management | baseline finish 2025-08-18 → 2025-06-29 |
| 9 | Routine utilities | baseline start 2025-08-19 → 2025-05-06; baseline finish 2025-10-17 → 2025-05-25 |
| 10 | Complex utilities | baseline start 2025-06-10 → 2025-03-07; baseline finish 2025-09-07 → 2025-06-04 |
| 12 | Hardware documentation | baseline start 2025-06-10 → 2025-05-06; baseline finish 2025-06-19 → 2025-05-15 |
| 13 | Integration first phase | baseline start 2025-10-18 → 2025-06-30; baseline finish 2025-11-21 → 2025-07-23 |
| 14 | Prototypes | baseline start 2025-11-22 → 2025-07-23; baseline finish 2026-01-25 → 2025-09-05 |
| 15 | Serial I/O drivers | baseline start 2025-11-22 → 2025-07-23; baseline finish 2026-02-14 → 2025-09-03 |
| 16 | System hard/software test | baseline start 2026-02-15 → 2025-09-05; baseline finish 2026-03-06 → 2025-09-10 |
| 17 | Order printed circuit boards | baseline start 2026-03-07 → 2025-09-10; baseline finish 2026-03-11 → 2025-09-15 |
| 18 | Network interface | baseline start 2026-03-27 → 2025-09-10; baseline finish 2026-04-20 → 2025-10-05 |
| 19 | Shell | baseline start 2026-04-01 → 2025-09-10; baseline finish 2026-04-25 → 2025-10-05 |
| 20 | Project documentation | baseline start 2026-03-07 → 2025-09-10; baseline finish 2026-03-26 → 2025-09-30 |
| 21 | Assemble preproduction | baseline start 2026-03-17 → 2025-09-20; baseline finish 2026-03-31 → 2025-10-05 |
| 22 | Integrated acceptance test | baseline start 2026-04-26 → 2025-10-05; baseline finish 2026-05-15 → 2025-10-11 |

## Version 4 (data date 2025-02-28, saved 2024-03-21, file FINAL Spring 24 Start File_2_1_1.mpp)

Note of the change: Spring semester files

Last finish 2025-10-11 → 2025-10-21 (+10d). Complete tasks 0 → 3.

Changed:

| ID | Task | Start | Finish | Duration | Complete | Total float |
| --- | --- | --- | --- | --- | --- | --- |
| 1 | System architecture | 2025-01-01 A | 2025-02-09 A |  | 0% → 100% | 0d → none |
| 2 | Hardware specifications | 2025-02-10 A | 2025-03-31 → 2025-04-14 (+14d) | 50d → 64d | 0% → 30% |  |
| 3 | Kernel specifications | 2025-02-10 A | 2025-03-01 → 2025-02-28 A (-1d) | 20d → 19d | 0% → 100% | 0d → none |
| 4 | Utilities Specification | 2025-02-10 A | 2025-03-06 → 2025-02-28 A (-6d) | 25d → 19d | 0% → 100% | 0d → none |
| 5 | Hardware Design | 2025-04-01 → 2025-04-15 (+14d) | 2025-05-05 → 2025-05-19 (+14d) |  |  | 45d → 41d |
| 6 | Disk drivers | 2025-03-02 → 2025-03-01 (-1d) | 2025-05-30 → 2025-05-29 (-1d) |  |  | 30d → 41d |
| 7 | Memory management | 2025-06-05 → 2025-05-26 (-10d) | 2025-06-29 → 2025-06-20 (-9d) |  |  | 0d → 19.33d |
| 8 | Operating system documentation | 2025-03-02 → 2025-03-01 (-1d) | 2025-03-16 → 2025-03-15 (-1d) |  |  | 105d → 116d |
| 9 | Routine utilities | 2025-05-06 → 2025-06-20 (+45d) | 2025-05-25 → 2025-07-09 (+45d) |  |  | 35d → 0d |
| 10 | Complex utilities | 2025-03-07 → 2025-03-01 (-6d) | 2025-06-04 → 2025-05-29 (-6d) |  |  | 25d → 41d |
| 11 | Utilities documentation | 2025-03-17 → 2025-03-16 (-1d) | 2025-03-26 → 2025-03-25 (-1d) |  |  | 95d → 106d |
| 12 | Hardware documentation | 2025-05-06 → 2025-05-20 (+14d) | 2025-05-15 → 2025-05-29 (+14d) |  |  | 45d → 41d |
| 13 | Integration first phase | 2025-06-30 → 2025-07-10 (+10d) | 2025-07-23 → 2025-08-02 (+10d) |  |  |  |
| 14 | Prototypes | 2025-07-23 → 2025-08-02 (+10d) | 2025-09-05 → 2025-09-15 (+10d) |  |  |  |
| 15 | Serial I/O drivers | 2025-07-23 → 2025-08-02 (+10d) | 2025-09-03 → 2025-09-13 (+10d) |  |  |  |
| 16 | System hard/software test | 2025-09-05 → 2025-09-15 (+10d) | 2025-09-10 → 2025-09-20 (+10d) |  |  |  |
| 17 | Order printed circuit boards | 2025-09-10 → 2025-09-20 (+10d) | 2025-09-15 → 2025-09-25 (+10d) |  |  |  |
| 18 | Network interface | 2025-09-10 → 2025-09-20 (+10d) | 2025-10-05 → 2025-10-15 (+10d) |  |  |  |
| 19 | Shell | 2025-09-10 → 2025-09-20 (+10d) | 2025-10-05 → 2025-10-15 (+10d) |  |  |  |
| 20 | Project documentation | 2025-09-10 → 2025-09-20 (+10d) | 2025-09-30 → 2025-10-10 (+10d) |  |  |  |
| 21 | Assemble preproduction | 2025-09-20 → 2025-09-30 (+10d) | 2025-10-05 → 2025-10-15 (+10d) |  |  |  |
| 22 | Integrated acceptance test | 2025-10-05 → 2025-10-15 (+10d) | 2025-10-11 → 2025-10-21 (+10d) |  |  |  |
