# Conveyor Belt Plan

How a schedule from MS Project changed from version to version. A marks actual dates.

## Version 1 (saved 2024-03-22, file Spring 24 Start File over allocated - Copy.mpp)

Note of the change: Spring semester files

| ID | Task | Duration | Start | Finish | Predecessors | Total float | Constraint |
| --- | --- | --- | --- | --- | --- | --- | --- |
| 1 | System architecture | 40d | 2025-01-01 | 2025-02-09 |  | 0d |  |
| 2 | Hardware specifications | 50d | 2025-02-10 | 2025-03-31 | 1 | 0d | must start on 2025-02-10 |
| 3 | Kernel specifications | 20d | 2025-02-10 | 2025-03-01 | 1 | 0d | must start on 2025-02-10 |
| 4 | Utilities Specification | 25d | 2025-02-10 | 2025-03-06 | 1 | 0d | must start on 2025-02-10 |
| 5 | Hardware Design | 35d | 2025-04-01 | 2025-05-05 | 2 | 20d |  |
| 6 | Disk drivers | 90d | 2025-03-02 | 2025-05-30 | 3 | 5d |  |
| 7 | Memory management | 25d | 2025-03-02 | 2025-03-26 | 3 | 70d |  |
| 8 | Operating system documentation | 15d | 2025-03-02 | 2025-03-16 | 3 | 80d |  |
| 9 | Routine utilities | 30d | 2025-03-07 | 2025-04-05 | 4 | 60d |  |
| 10 | Complex utilities | 90d | 2025-03-07 | 2025-06-04 | 4 | 0d |  |
| 11 | Utilities documentation | 10d | 2025-03-07 | 2025-03-16 | 4 | 80d |  |
| 12 | Hardware documentation | 10d | 2025-05-06 | 2025-05-15 | 5 | 20d |  |
| 13 | Integration first phase | 23.33d | 2025-06-05 | 2025-06-28 | 6, 7, 8, 9, 10, 11, 12 | 0d |  |
| 14 | Prototypes | 44d | 2025-06-28 | 2025-08-11 | 13 | 0d |  |
| 15 | Serial I/O drivers | 42.5d | 2025-06-28 | 2025-08-09 | 13 | 1.5d |  |
| 16 | System hard/software test | 5d | 2025-08-11 | 2025-08-16 | 14, 15 | 0d |  |
| 17 | Order printed circuit boards | 5d | 2025-08-16 | 2025-08-21 | 16 | 0d |  |
| 18 | Network interface | 25d | 2025-08-16 | 2025-09-10 | 16 | 0d |  |
| 19 | Shell | 25d | 2025-08-16 | 2025-09-10 | 16 | 0d |  |
| 20 | Project documentation | 20d | 2025-08-16 | 2025-09-05 | 16 | 5d |  |
| 21 | Assemble preproduction | 15d | 2025-08-26 | 2025-09-10 | 17FS+5d | 0d |  |
| 22 | Integrated acceptance test | 10d | 2025-09-10 | 2025-09-20 | 18, 19, 20, 21 | 0d |  |

## Version 2 (saved 2024-03-22, file Spring 24 Start File Baseline.mpp)

Note of the change: Spring semester files

Last finish 2025-09-20 → 2025-10-08 (+18d).

Changed:

| ID | Task | Start | Finish | Duration | Total float | Other |
| --- | --- | --- | --- | --- | --- | --- |
| 5 | Hardware Design |  | 2025-05-05 → 2025-04-18 (-17d) | 35d → 17.5d | 20d → 57d |  |
| 6 | Disk drivers | 2025-03-02 → 2025-04-27 (+56d) | 2025-05-30 → 2025-06-10 (+11d) | 90d → 45d | 5d → 13.5d | resources Assembly/Test; Development → Assembly/Test; Development [50%]; External Test; External Development [200%] |
| 7 | Memory management | 2025-03-02 → 2025-04-20 (+49d) | 2025-03-26 → 2025-05-04 (+39d) | 25d → 14.06d | 70d → 51.44d | resources Development [300%] → Development; External Development [400%] |
| 9 | Routine utilities | 2025-03-07 → 2025-06-09 (+94d) | 2025-04-05 → 2025-06-24 (+80d) | 30d → 15d | 60d → 0d |  |
| 10 | Complex utilities | 2025-03-07 → 2025-05-04 (+58d) | 2025-06-04 → 2025-06-17 (+13d) | 90d → 45d | 0d → 6.5d | resources Development → Development; External Development |
| 11 | Utilities documentation | 2025-03-07 → 2025-03-17 (+10d) | 2025-03-16 → 2025-03-26 (+10d) |  | 80d → 89.5d |  |
| 12 | Hardware documentation | 2025-05-06 → 2025-04-18 (-18d) | 2025-05-15 → 2025-04-28 (-17d) |  | 20d → 57d |  |
| 13 | Integration first phase | 2025-06-05 → 2025-06-24 (+19d) | 2025-06-28 → 2025-07-17 (+19d) |  |  |  |
| 14 | Prototypes | 2025-06-28 → 2025-07-17 (+19d) | 2025-08-11 → 2025-08-29 (+18d) | 44d → 43d |  | resources Assembly/Test; Development → Assembly/Test; Development; External Development; External Test |
| 15 | Serial I/O drivers | 2025-06-28 → 2025-07-17 (+19d) | 2025-08-09 → 2025-08-29 (+20d) |  | 1.5d → 0.5d |  |
| 16 | System hard/software test | 2025-08-11 → 2025-08-29 (+18d) | 2025-08-16 → 2025-09-03 (+18d) |  |  |  |
| 17 | Order printed circuit boards | 2025-08-16 → 2025-09-03 (+18d) | 2025-08-21 → 2025-09-08 (+18d) |  | 0d → 5d |  |
| 18 | Network interface | 2025-08-16 → 2025-09-03 (+18d) | 2025-09-10 → 2025-09-28 (+18d) |  |  |  |
| 19 | Shell | 2025-08-16 → 2025-09-03 (+18d) | 2025-09-10 → 2025-09-28 (+18d) |  |  |  |
| 20 | Project documentation | 2025-08-16 → 2025-09-03 (+18d) | 2025-09-05 → 2025-09-23 (+18d) |  |  |  |
| 21 | Assemble preproduction | 2025-08-26 → 2025-09-13 (+18d) | 2025-09-10 → 2025-09-23 (+13d) | 15d → 10d | 0d → 5d | resources Assembly/Test; Development → Assembly/Test; Development; External Test |
| 22 | Integrated acceptance test | 2025-09-10 → 2025-09-28 (+18d) | 2025-09-20 → 2025-10-08 (+18d) | 10d → 9.32d |  | resources Assembly/Test; Development [200%] → Assembly/Test; Development [200%]; External Test |

## Version 3 (data date 2025-02-28, saved 2024-03-23, file Spring 24 Start File Earned Value.mpp)

Note of the change: Spring semester files

Last finish 2025-10-08 → 2025-09-01 (-37d). Complete tasks 0 → 3.

Changed:

| ID | Task | Start | Finish | Duration | Complete | Total float | Other |
| --- | --- | --- | --- | --- | --- | --- | --- |
| 1 | System architecture | 2025-01-01 A | 2025-02-09 A |  | 0% → 100% | 0d → none | baseline start none → 2025-01-01; baseline finish none → 2025-02-09 |
| 2 | Hardware specifications | 2025-02-10 A | 2025-03-31 → 2025-04-14 (+14d) | 50d → 64d | 0% → 30% |  | baseline start none → 2025-02-10; baseline finish none → 2025-03-31 |
| 3 | Kernel specifications | 2025-02-10 A | 2025-03-01 → 2025-02-28 A (-1d) | 20d → 19d | 0% → 100% | 0d → none | baseline start none → 2025-02-10; baseline finish none → 2025-03-01 |
| 4 | Utilities Specification | 2025-02-10 A | 2025-03-06 → 2025-02-28 A (-6d) | 25d → 19d | 0% → 100% | 0d → none | baseline start none → 2025-02-10; baseline finish none → 2025-03-06 |
| 5 | Hardware Design | 2025-04-01 → 2025-04-15 (+14d) | 2025-04-18 → 2025-05-02 (+14d) |  |  | 57d → 6.5d | baseline start none → 2025-04-01; baseline finish none → 2025-04-18 |
| 6 | Disk drivers | 2025-04-27 → 2025-03-01 (-57d) | 2025-06-10 → 2025-04-14 (-57d) |  |  | 13.5d → 34d | baseline start none → 2025-04-27; baseline finish none → 2025-06-10 |
| 7 | Memory management | 2025-04-20 → 2025-05-04 (+14d) | 2025-05-04 → 2025-05-18 (+14d) |  |  | 51.44d → 0.94d | baseline start none → 2025-04-20; baseline finish none → 2025-05-04 |
| 8 | Operating system documentation | 2025-03-02 → 2025-03-01 (-1d) | 2025-03-16 → 2025-03-15 (-1d) |  |  | 99.5d → 64d | baseline start none → 2025-03-02; baseline finish none → 2025-03-16 |
| 9 | Routine utilities | 2025-06-09 → 2025-05-04 (-36d) | 2025-06-24 → 2025-05-18 (-37d) |  |  |  | baseline start none → 2025-06-09; baseline finish none → 2025-06-24 |
| 10 | Complex utilities | 2025-05-04 → 2025-03-01 (-64d) | 2025-06-17 → 2025-04-14 (-64d) |  |  | 6.5d → 34d | baseline start none → 2025-05-04; baseline finish none → 2025-06-17 |
| 11 | Utilities documentation | 2025-03-17 → 2025-03-16 (-1d) | 2025-03-26 → 2025-03-25 (-1d) |  |  | 89.5d → 54d | baseline start none → 2025-03-17; baseline finish none → 2025-03-26 |
| 12 | Hardware documentation | 2025-04-18 → 2025-05-02 (+14d) | 2025-04-28 → 2025-05-12 (+14d) |  |  | 57d → 6.5d | baseline start none → 2025-04-18; baseline finish none → 2025-04-28 |
| 13 | Integration first phase | 2025-06-24 → 2025-05-19 (-36d) | 2025-07-17 → 2025-06-11 (-36d) |  |  |  | baseline start none → 2025-06-24; baseline finish none → 2025-07-17 |
| 14 | Prototypes | 2025-07-17 → 2025-06-11 (-36d) | 2025-08-29 → 2025-07-24 (-36d) |  |  |  | baseline start none → 2025-07-17; baseline finish none → 2025-08-29 |
| 15 | Serial I/O drivers | 2025-07-17 → 2025-06-11 (-36d) | 2025-08-29 → 2025-07-23 (-37d) |  |  |  | baseline start none → 2025-07-17; baseline finish none → 2025-08-29 |
| 16 | System hard/software test | 2025-08-29 → 2025-07-24 (-36d) | 2025-09-03 → 2025-07-29 (-36d) |  |  |  | baseline start none → 2025-08-29; baseline finish none → 2025-09-03 |
| 17 | Order printed circuit boards | 2025-09-03 → 2025-07-29 (-36d) | 2025-09-08 → 2025-08-03 (-36d) |  |  |  | baseline start none → 2025-09-03; baseline finish none → 2025-09-08 |
| 18 | Network interface | 2025-09-03 → 2025-07-29 (-36d) | 2025-09-28 → 2025-08-23 (-36d) |  |  |  | baseline start none → 2025-09-03; baseline finish none → 2025-09-28 |
| 19 | Shell | 2025-09-03 → 2025-07-29 (-36d) | 2025-09-28 → 2025-08-23 (-36d) |  |  |  | baseline start none → 2025-09-03; baseline finish none → 2025-09-28 |
| 20 | Project documentation | 2025-09-03 → 2025-07-29 (-36d) | 2025-09-23 → 2025-08-18 (-36d) |  |  |  | baseline start none → 2025-09-03; baseline finish none → 2025-09-23 |
| 21 | Assemble preproduction | 2025-09-13 → 2025-08-08 (-36d) | 2025-09-23 → 2025-08-18 (-36d) |  |  |  | baseline start none → 2025-09-13; baseline finish none → 2025-09-23 |
| 22 | Integrated acceptance test | 2025-09-28 → 2025-08-23 (-36d) | 2025-10-08 → 2025-09-01 (-37d) |  |  |  | baseline start none → 2025-09-28; baseline finish none → 2025-10-08 |

## Version 4 (data date 2025-02-28, saved 2024-03-24, file Spring 24 Start File Baseline - EV attempt 2.mpp)

Note of the change: Spring semester files

Last finish 2025-09-01 → 2025-08-26 (-6d).

Changed:

| ID | Task | Start | Finish | Total float |
| --- | --- | --- | --- | --- |
| 7 | Memory management | 2025-05-04 → 2025-04-20 (-14d) | 2025-05-18 → 2025-05-04 (-14d) | 0.94d → 8.44d |
| 9 | Routine utilities | 2025-05-04 → 2025-04-20 (-14d) | 2025-05-18 → 2025-05-04 (-14d) | 0d → 7.5d |
| 13 | Integration first phase | 2025-05-19 → 2025-05-12 (-7d) | 2025-06-11 → 2025-06-04 (-7d) |  |
| 14 | Prototypes | 2025-06-11 → 2025-06-04 (-7d) | 2025-07-24 → 2025-07-17 (-7d) |  |
| 15 | Serial I/O drivers | 2025-06-11 → 2025-06-04 (-7d) | 2025-07-23 → 2025-07-17 (-6d) |  |
| 16 | System hard/software test | 2025-07-24 → 2025-07-17 (-7d) | 2025-07-29 → 2025-07-22 (-7d) |  |
| 17 | Order printed circuit boards | 2025-07-29 → 2025-07-22 (-7d) | 2025-08-03 → 2025-07-27 (-7d) |  |
| 18 | Network interface | 2025-07-29 → 2025-07-22 (-7d) | 2025-08-23 → 2025-08-16 (-7d) |  |
| 19 | Shell | 2025-07-29 → 2025-07-22 (-7d) | 2025-08-23 → 2025-08-16 (-7d) |  |
| 20 | Project documentation | 2025-07-29 → 2025-07-22 (-7d) | 2025-08-18 → 2025-08-11 (-7d) |  |
| 21 | Assemble preproduction | 2025-08-08 → 2025-08-01 (-7d) | 2025-08-18 → 2025-08-11 (-7d) |  |
| 22 | Integrated acceptance test | 2025-08-23 → 2025-08-16 (-7d) | 2025-09-01 → 2025-08-26 (-6d) |  |
